# Veggie Harvest Project Plan

Schedule from MS Project, 2011-11-08 to 2011-12-15, A marks actual dates.
Hewlett-Packard

## Calendars

- Standard: Mon-Fri 08:00-12:00, 13:00-17:00; Sat-Sun off.

## Resources

| Resource |
| --- |
| Joseph Blair |
| Todd Dobbs |
| Christine Talbot |
| Eric Faust |
| TBD |
| Christine Talbot & Eric Faust |
| Eric Faust & Christine Talbot |
| All |
| ? |
| Anyone As Available |

## Schedule

| ID | WBS | Task | Type | Duration | Start | Finish | Predecessors | Complete | Remaining | Total slack | Resources | Work | Actual work | Resource for Actual Completion |
| --- | --- | --- | --- | --- | --- | --- | --- | --- | --- | --- | --- | --- | --- | --- |
| 1 | 1 | **Intro to Game Design Final Project Schedule** |  | 28d? | 2011-11-08 A | 2011-12-15 |  | 99% | 0.36d? | 0d |  | 6504h | 6430h |  |
| 2 | 1.1 | **Homework 9 Tasks** |  | 24d | 2011-11-08 A | 2011-12-09 A |  | 100% |  |  |  | 1016h | 1016h |  |
| 3 | 1.1.1 | Create initial Unity framework | manual | 3d | 2011-11-08 A | 2011-11-10 A |  | 100% |  |  | Joseph Blair | 24h | 24h | Joseph Blair |
| 4 | 1.1.2 | **Unity Scenes** |  | 4d | 2011-11-11 A | 2011-11-16 A |  | 100% |  |  |  | 104h | 104h |  |
| 5 | 1.1.2.1 | Create configuration page | manual | 2d | 2011-11-15 A | 2011-11-16 A | 3, 6, 7, 8, 21, 22 | 100% |  |  | Todd Dobbs | 16h | 16h | Todd Dobbs |
| 6 | 1.1.2.2 | Create credits page | manual | 3d | 2011-11-11 A | 2011-11-15 A | 3, 24 | 100% |  |  | Christine Talbot | 24h | 24h | Christine Talbot |
| 7 | 1.1.2.3 | Create main game page | manual | 4d | 2011-11-11 A | 2011-11-16 A | 3, 24 | 100% |  |  | Joseph Blair | 32h | 32h | Joseph Blair & Christine Talbot |
| 8 | 1.1.2.4 | Create instructions page | manual | 4d | 2011-11-11 A | 2011-11-16 A | 3, 24 | 100% |  |  | Joseph Blair | 32h | 32h | Joseph Blair |
| 9 | 1.1.3 | **HTML Main Page** |  | 7d | 2011-11-08 A | 2011-11-16 A |  | 100% |  |  |  | 104h | 104h |  |
| 10 | 1.1.3.1 | Create design document | manual | 4d | 2011-11-08 A | 2011-11-11 A |  | 100% |  |  | Christine Talbot | 32h | 32h | Christine Talbot |
| 11 | 1.1.3.2 | Create index.html page | manual | 2d | 2011-11-08 A | 2011-11-09 A |  | 100% |  |  | Christine Talbot | 16h | 16h | Christine Talbot |
| 12 | 1.1.3.3 | Edit/Finetune design document | manual | 3d | 2011-11-14 A | 2011-11-16 A | 10 | 100% |  |  | Eric Faust | 24h | 24h | Eric Faust |
| 13 | 1.1.3.4 | Edit/Finetune index.html document | manual | 4d | 2011-11-11 A | 2011-11-16 A | 11, 24 | 100% |  |  | Eric Faust | 32h | 32h | Eric Faust |
| 14 | 1.1.4 | **Gather media assets** |  | 24d | 2011-11-08 A | 2011-12-09 A |  | 100% |  |  |  | 784h | 784h |  |
| 15 | 1.1.4.1 | **Images** |  | 3d | 2011-11-13 A | 2011-11-16 A |  | 100% |  |  |  | 120h | 120h |  |
| 16 | 1.1.4.1.1 | Title images for scenes | manual | 3d | 2011-11-13 A | 2011-11-15 A |  | 100% |  |  | Christine Talbot | 24h | 24h | Christine Talbot |
| 17 | 1.1.4.1.2 | Plant images for main page | manual | 4d | 2011-11-13 A | 2011-11-16 A |  | 100% |  |  | Eric Faust | 32h | 32h | Eric Faust |
| 18 | 1.1.4.1.3 | Images for symbology in instructions | manual | 4d | 2011-11-13 A | 2011-11-16 A |  | 100% |  |  | Eric Faust | 32h | 32h | Eric Faust |
| 19 | 1.1.4.1.4 | Images for story in design doc | manual | 4d | 2011-11-13 A | 2011-11-16 A |  | 100% |  |  | Christine Talbot & Eric Faust | 32h | 32h | Christine Talbot & Eric Faust |
| 20 | 1.1.4.2 | **Sounds** |  | 6d | 2011-11-08 A | 2011-11-15 A |  | 100% |  |  |  | 72h | 72h |  |
| 21 | 1.1.4.2.1 | Button click sounds | manual | 3d | 2011-11-08 A | 2011-11-10 A |  | 100% |  |  | Joseph Blair | 24h | 24h | Joseph Blair |
| 22 | 1.1.4.2.2 | Background music | manual | 6d | 2011-11-08 A | 2011-11-15 A |  | 100% |  |  | Christine Talbot | 48h | 48h | Christine Talbot |
| 23 | 1.1.4.3 | **Fonts** |  | 24d | 2011-11-08 A | 2011-12-09 A |  | 100% |  |  |  | 192h | 192h |  |
| 24 | 1.1.4.3.1 | Theme font for titles | manual | 5d | 2011-11-08 A | 2011-11-13 A |  | 100% |  |  | Christine Talbot | 40h | 40h | Christine Talbot |
| 25 | 1.1.4.3.2 | Other font(s)? | manual | 19d | 2011-11-15 A | 2011-12-09 A |  | 100% |  |  | TBD | 152h | 152h | Christine Talbot |

| ID | WBS | Task | Type | Duration | Start | Finish | Predecessors | Complete | Remaining | Actual finish | Total slack | Resources | Work | Actual work | Resource for Actual Completion |
| --- | --- | --- | --- | --- | --- | --- | --- | --- | --- | --- | --- | --- | --- | --- | --- |
| 26 | 1.1.4.4 | **Other Potential media items** |  | 18d | 2011-11-08 A | 2011-12-01 A |  | 100% |  |  |  |  | 352h | 352h |  |
| 27 | 1.1.4.4.1 | Images | manual | 18d | 2011-11-08 A | 2011-12-01 A |  | 100% |  |  |  | Eric Faust & Christine Talbot | 144h | 144h | Eric Faust & Christine Talbot |
| 28 | 1.1.4.4.2 | Animations | manual | 18d | 2011-11-08 A | 2011-12-01 A |  | 100% |  |  |  | Eric Faust | 144h | 144h | Eric Faust |
| 29 | 1.1.4.4.3 | Sounds | manual | 8d | 2011-11-08 A | 2011-11-17 A |  | 100% |  |  |  | Eric Faust | 64h | 64h | Eric Faust & Christine Talbot |
| 30 | 1.1.4.5 | **Linkage tasks** |  | 2d | 2011-11-15 A | 2011-11-16 A |  | 100% |  |  |  |  | 48h | 48h |  |
| 31 | 1.1.4.5.1 | Apply configuration to all screens | manual | 2d | 2011-11-15 A | 2011-11-16 A | 5, 6, 7, 8 | 100% |  |  |  | Todd Dobbs | 16h | 16h | Todd Dobbs |
| 32 | 1.1.4.5.2 | Apply controller & mouse settings to all screens | manual | 2d | 2011-11-15 A | 2011-11-16 A | 5, 6, 7, 8 | 100% |  |  |  | Todd Dobbs | 16h | 16h | Todd Dobbs |
| 33 | 1.1.4.5.3 | Review & update scenes for consistency | manual | 2d | 2011-11-15 A | 2011-11-16 A | 5, 6, 7, 8 | 100% |  |  |  | Christine Talbot | 16h | 16h | Christine Talbot |
| 34 | 1.2 | Milestone - Hw9 Due | milestone, manual | 0d | 2011-11-16 A | 2011-11-16 A |  | 100% |  |  |  |  |  |  | All |
| 35 | 1.3 | **Game Tasks** |  | 22d? | 2011-11-16 A | 2011-12-15 |  | 99% | 0.3d? |  | 0d |  | 5488h | 5414h |  |
| 36 | 1.3.1 | Create and Manage Project Plan | manual | 21d | 2011-11-16 A | 2011-12-14 A |  | 100% |  |  |  | Christine Talbot | 168h | 168h | Christine Talbot |
| 37 | 1.3.2 | **First "Sprint"** |  | 9d | 2011-11-16 A | 2011-11-28 |  | 100% |  | 2011-12-14 |  |  | 2392h | 2392h |  |
| 38 | 1.3.2.1 | **Board** |  | 16d | 2011-11-16 A | 2011-12-07 A |  | 100% |  |  |  |  | 808h | 808h |  |
| 39 | 1.3.2.1.1 | Board Layout 4x3 board | manual | 9d | 2011-11-16 A | 2011-11-27 A |  | 100% |  |  |  | Joseph Blair | 72h | 72h | Joseph Blair |
| 40 | 1.3.2.1.2 | Board Images/colors/names | manual | 8d | 2011-11-17 A | 2011-11-27 A | 39 | 100% |  |  |  | Joseph Blair | 64h | 64h | Joseph Blair |
| 41 | 1.3.2.1.3 | Player color bands | manual | 8d | 2011-11-17 A | 2011-11-27 A | 39 | 100% |  |  |  | Joseph Blair | 64h | 64h | Joseph Blair |
| 42 | 1.3.2.1.4 | Message Center object | manual | 15d | 2011-11-17 A | 2011-12-07 A | 39 | 100% |  |  |  | Joseph Blair | 120h | 120h | Christine Talbot |
| 43 | 1.3.2.1.5 | Score boxes | manual | 15d | 2011-11-17 A | 2011-12-07 A | 39 | 100% |  |  |  | Joseph Blair | 120h | 120h | Christine Talbot |
| 44 | 1.3.2.1.6 | Quit btn | manual | 12d | 2011-11-16 A | 2011-12-01 A | 39 | 100% |  |  |  | Joseph Blair | 96h | 96h | Christine Talbot |
| 45 | 1.3.2.1.7 | Card deck boxes | manual | 8d | 2011-11-17 A | 2011-11-27 A | 39 | 100% |  |  |  | Joseph Blair | 64h | 64h | Joseph Blair |
| 46 | 1.3.2.1.8 | Drawn card display areas | manual | 11d | 2011-11-17 A | 2011-12-01 A | 39 | 100% |  |  |  | Joseph Blair | 88h | 88h | Joseph Blair |
| 47 | 1.3.2.1.9 | Create win/lose screen | manual | 15d | 2011-11-17 A | 2011-12-07 A |  | 100% |  |  |  | Joseph Blair | 120h | 120h | Christine Talbot |
| 48 | 1.3.2.2 | **Turn Controls** |  | 4d | 2011-11-17 A | 2011-11-22 A |  | 100% |  |  |  |  | 160h | 160h |  |
| 49 | 1.3.2.2.1 | Spinner for 0,1,2 code | manual | 4d | 2011-11-17 A | 2011-11-22 A |  | 100% |  |  |  | Eric Faust | 32h | 32h | Discarded |
| 50 | 1.3.2.2.2 | spinner for 0,1,2 animations | manual | 3d | 2011-11-18 A | 2011-11-22 A | 49 | 100% |  |  |  | Eric Faust | 24h | 24h | Discarded |
| 51 | 1.3.2.2.3 | Determination of turn | manual | 4d | 2011-11-17 A | 2011-11-22 A | 58 | 100% |  |  |  | Eric Faust | 32h | 32h | Discarded |
| 52 | 1.3.2.2.4 | popup screen for spinner | manual | 4d | 2011-11-17 A | 2011-11-22 A |  | 100% |  |  |  | Eric Faust | 32h | 32h | Discarded |
| 53 | 1.3.2.2.5 | trigger function for spin | manual | 3d | 2011-11-18 A | 2011-11-22 A | 49 | 100% |  |  |  | Eric Faust | 24h | 24h | Discarded |
| 54 | 1.3.2.2.6 | message center status update | manual | 2d | 2011-11-21 A | 2011-11-22 A | 67 | 100% |  |  |  | Eric Faust | 16h | 16h | Discarded |

| ID | WBS | Task | Type | Duration | Start | Finish | Predecessors | Complete | Actual finish | Resources | Work | Actual work | Resource for Actual Completion |
| --- | --- | --- | --- | --- | --- | --- | --- | --- | --- | --- | --- | --- | --- |
| 55 | 1.3.2.3 | **Controller** |  | 20d | 2011-11-17 A | 2011-12-14 A |  | 100% |  |  | 312h | 312h |  |
| 56 | 1.3.2.3.1 | Enable controller via code | manual | 20d | 2011-11-17 A | 2011-12-14 A |  | 100% |  | Todd Dobbs | 160h | 160h | Todd Dobbs |
| 57 | 1.3.2.3.2 | Determine selectable items | manual | 19d | 2011-11-18 A | 2011-12-14 A | 38 | 100% |  | Todd Dobbs | 152h | 152h | Todd Dobbs |
| 58 | 1.3.2.4 | **Game State** |  | 15d | 2011-11-17 A | 2011-12-07 A |  | 100% |  |  | 360h | 360h |  |
| 59 | 1.3.2.4.1 | Core code and classes | manual | 15d | 2011-11-17 A | 2011-12-07 A |  | 100% |  | Todd Dobbs | 120h | 120h |  |
| 60 | 1.3.2.4.2 | basic scoring | manual | 15d | 2011-11-17 A | 2011-12-07 A |  | 100% |  | Todd Dobbs | 120h | 120h | Todd Dobbs |
| 61 | 1.3.2.4.3 | Scoring Info retrieval | manual | 15d | 2011-11-17 A | 2011-12-07 A | 43 | 100% |  | Todd Dobbs | 120h | 120h | Todd Dobbs |
| 62 | 1.3.2.5 | **Object movements** |  | 15d | 2011-11-17 A | 2011-12-07 A |  | 100% |  |  | 632h | 632h |  |
| 63 | 1.3.2.5.1 | Simple destroy / grow logic | manual | 13d | 2011-11-18 A | 2011-12-06 A | 68 | 100% |  | Joseph Blair | 104h | 104h | Todd Dobbs |
| 64 | 1.3.2.5.2 | Update message center for status | manual | 14d | 2011-11-18 A | 2011-12-07 A | 67 | 100% |  | Christine Talbot | 112h | 112h | Christine Talbot |
| 65 | 1.3.2.5.3 | Update message center for status | manual | 14d | 2011-11-18 A | 2011-12-07 A | 67 | 100% |  | Joseph Blair | 112h | 112h | Christine Talbot |
| 66 | 1.3.2.5.4 | Drag / place cards on board | manual | 6d | 2011-11-21 A | 2011-11-27 A | 38 | 100% |  | Joseph Blair | 48h | 48h | Joseph Blair |
| 67 | 1.3.2.5.5 | Message Center Update function | manual | 14d | 2011-11-18 A | 2011-12-07 A | 42 | 100% |  | Todd Dobbs | 112h | 112h | Christine Talbot |
| 68 | 1.3.2.5.6 | Board State status retrieval | manual | 9d | 2011-11-17 A | 2011-11-29 A |  | 100% |  | Todd Dobbs | 72h | 72h | Todd Dobbs |
| 69 | 1.3.2.5.7 | Board State status updates | manual | 9d | 2011-11-17 A | 2011-11-29 A |  | 100% |  | Todd Dobbs | 72h | 72h | Todd Dobbs |
| 70 | 1.3.2.6 | **AI - one player** |  | 7d | 2011-11-17 A | 2011-11-27 A |  | 100% |  |  | 120h | 120h |  |
| 71 | 1.3.2.6.1 | Initiate spinner via "hook" like real player click | manual | 2d | 2011-11-18 A | 2011-11-21 A | 53 | 100% |  | Christine Talbot | 16h | 16h | Discarded |
| 72 | 1.3.2.6.2 | Choose cards to draw via "hook" to click deck | manual | 3d | 2011-11-17 A | 2011-11-21 A | 75 | 100% |  | Christine Talbot | 24h | 24h | Christine Talbot |
| 73 | 1.3.2.6.3 | Place drawn cards onto board via "place" hook | milestone, manual | 0d | 2011-11-21 A | 2011-11-21 A | 66 | 100% |  | Christine Talbot |  |  | Christine Talbot |
| 74 | 1.3.2.6.4 | retrieve board state for decisions | manual | 2d | 2011-11-18 A | 2011-11-21 A | 68 | 100% |  | Christine Talbot | 16h | 16h | Christine Talbot |
| 75 | 1.3.2.6.5 | Click on deck to "draw" cards | manual | 8d | 2011-11-17 A | 2011-11-27 A | 38, 57 | 100% |  | Joseph Blair | 64h | 64h | Christine Talbot |
| 76 | 1.3.2.7 | Post-Thanksgiving Week Checkpoint | milestone, manual | 4d | 2011-11-28 A | 2011-12-01 A |  | 100% |  |  |  |  | All |
| 77 | 1.3.3 | **Second "Sprint"** |  | 6d? | 2011-12-01 A | 2011-12-08 |  | 100% | 2011-12-14 |  | 1200h | 1200h |  |
| 78 | 1.3.3.1 | **Game State** |  | 7d | 2011-12-01 A | 2011-12-10 A |  | 100% |  |  | 176h | 176h |  |
| 79 | 1.3.3.1.1 | Scoring | manual | 5d | 2011-12-01 A | 2011-12-07 A |  | 100% |  | Todd Dobbs | 40h | 40h | Todd Dobbs |
| 80 | 1.3.3.1.2 | Global variables/constants | manual | 4d | 2011-12-01 A | 2011-12-06 A |  | 100% |  | Todd Dobbs | 32h | 32h | Todd Dobbs |
| 81 | 1.3.3.1.3 | Other accessor methods | manual | 5d | 2011-12-01 A | 2011-12-07 A |  | 100% |  | Todd Dobbs | 40h | 40h | Todd Dobbs |
| 82 | 1.3.3.1.4 | AI difficulty setting | manual | 8d | 2011-12-01 A | 2011-12-10 A |  | 100% |  | Todd Dobbs | 64h | 64h | Christine Talbot |

| ID | WBS | Task | Type | Duration | Start | Finish | Predecessors | Complete | Resources | Work | Actual work | Resource for Actual Completion |
| --- | --- | --- | --- | --- | --- | --- | --- | --- | --- | --- | --- | --- |
| 83 | 1.3.3.2 | **Configuration Screen** |  | 9d | 2011-12-01 A | 2011-12-13 A |  | 100% |  | 72h | 72h |  |
| 84 | 1.3.3.2.1 | Modify for new settings | manual | 9d | 2011-12-01 A | 2011-12-13 A |  | 100% | Todd Dobbs | 72h | 72h | Todd Dobbs & Christine Talbot |
| 85 | 1.3.3.3 | **Controller Setups** |  | 10d | 2011-12-01 A | 2011-12-14 A |  | 100% |  | 80h | 80h |  |
| 86 | 1.3.3.3.1 | controller & hover/select functionality | manual | 10d | 2011-12-01 A | 2011-12-14 A |  | 100% | Todd Dobbs | 80h | 80h | Todd Dobbs |
| 87 | 1.3.3.4 | **AI** |  | 4d | 2011-12-02 A | 2011-12-07 A |  | 100% |  | 40h | 40h |  |
| 88 | 1.3.3.4.1 | adjust AI for realtime | manual | 1d | 2011-12-05 A | 2011-12-05 A | 80, 81 | 100% | Christine Talbot | 8h | 8h | Christine Talbot |
| 89 | 1.3.3.4.2 | adjust AI for difficulty level | manual | 4d | 2011-12-02 A | 2011-12-07 A | 82 | 100% | Christine Talbot | 32h | 32h | Christine Talbot |
| 90 | 1.3.3.5 | **Instructions** |  | 9d | 2011-12-01 A | 2011-12-13 A |  | 100% |  | 104h | 104h |  |
| 91 | 1.3.3.5.1 | Info in popup when playing | manual | 4d | 2011-12-01 A | 2011-12-06 A |  | 100% | Christine Talbot | 32h | 32h | Discarded |
| 92 | 1.3.3.5.2 | Instructions Scene in Unity | manual | 9d | 2011-12-01 A | 2011-12-13 A |  | 100% | Joseph Blair | 72h | 72h | Christine Talbot |
| 93 | 1.3.3.6 | **Board** |  | 8d | 2011-12-01 A | 2011-12-12 A |  | 100% |  | 208h | 208h |  |
| 94 | 1.3.3.6.1 | Reset size to 3x6 | manual | 3d | 2011-12-01 A | 2011-12-05 A |  | 100% | Joseph Blair | 24h | 24h | Joseph Blair |
| 95 | 1.3.3.6.2 | Modify layouts | manual | 3d | 2011-12-01 A | 2011-12-05 A |  | 100% | Joseph Blair | 24h | 24h | Joseph Blair |
| 96 | 1.3.3.6.3 | Check click events | manual | 8d | 2011-12-01 A | 2011-12-10 A |  | 100% | Joseph Blair | 64h | 64h | Christine Talbot |
| 97 | 1.3.3.6.4 | full screen mode | manual | 3d | 2011-12-01 A | 2011-12-05 A |  | 100% | Eric Faust | 24h | 24h | Discarded |
| 98 | 1.3.3.6.5 | Add sounds | manual | 8d | 2011-12-01 A | 2011-12-12 A |  | 100% | Eric Faust | 72h | 72h | Christine Talbot |
| 99 | 1.3.3.7 | **Animations/Images** |  | 9d | 2011-12-01 A | 2011-12-13 A |  | 100% |  | 272h | 272h |  |
| 100 | 1.3.3.7.1 | Grow veggie | manual | 6d | 2011-12-05 A | 2011-12-10 A | 107 | 100% | Eric Faust | 48h | 48h | Christine Talbot |
| 101 | 1.3.3.7.2 | Show veggie with size # | manual | 4d | 2011-12-05 A | 2011-12-08 A | 107 | 100% | Eric Faust | 32h | 32h | Christine Talbot |
| 102 | 1.3.3.7.3 | Sway veggie when grow | manual | 7d | 2011-12-05 A | 2011-12-13 A | 107 | 100% | Eric Faust | 56h | 56h | Discarded |
| 103 | 1.3.3.7.4 | Constants for size text color for each veggie | manual | 7d | 2011-12-05 A | 2011-12-13 A | 104 | 100% | Eric Faust | 56h | 56h | Discarded |
| 104 | 1.3.3.7.5 | color bible | manual | 3d | 2011-12-01 A | 2011-12-05 A |  | 100% | Eric Faust | 24h | 24h | Eric Faust |
| 105 | 1.3.3.7.6 | soil images | manual | 7d | 2011-12-05 A | 2011-12-13 A | 94 | 100% | Eric Faust | 56h | 56h | Joseph Blair |
| 106 | 1.3.3.8 | **Timers** |  | 5d | 2011-12-01 A | 2011-12-07 A |  | 100% |  | 128h | 128h |  |
| 107 | 1.3.3.8.1 | Grow timer, fixed interval | manual | 5d | 2011-12-01 A | 2011-12-07 A |  | 100% | Eric Faust | 40h | 40h | Eric Faust & Todd Dobbs |
| 108 | 1.3.3.8.2 | Card choice timer | manual | 5d | 2011-12-01 A | 2011-12-07 A |  | 100% | Eric Faust | 40h | 40h | Eric Faust & Christine Talbot |
| 109 | 1.3.3.8.3 | Present random number of choices to players | manual | 2d | 2011-12-06 A | 2011-12-07 A | 108 | 100% | Eric Faust | 16h | 16h | Eric Faust |
| 110 | 1.3.3.8.4 | Fill in only empty slots, else discard cards allowed | manual | 1d | 2011-12-07 A | 2011-12-07 A | 109 | 100% | Eric Faust | 8h | 8h | Eric Faust |
| 111 | 1.3.3.8.5 | volcano grow logic? | manual | 3d | 2011-12-01 A | 2011-12-05 A |  | 100% | Eric Faust | 24h | 24h | Discarded |

| ID | WBS | Task | Type | Duration | Start | Finish | Complete | Remaining | Total slack | Resources | Work | Actual work | Resource for Actual Completion |
| --- | --- | --- | --- | --- | --- | --- | --- | --- | --- | --- | --- | --- | --- |
| 112 | 1.3.3.9 | **Playtesting** |  | 5d | 2011-12-01 A | 2011-12-07 A | 100% |  |  |  | 40h | 40h |  |
| 113 | 1.3.3.9.1 | playtest questionnaires | manual | 5d | 2011-12-01 A | 2011-12-07 A | 100% |  |  | Joseph Blair | 40h | 40h | Joseph Blair & Todd Dobbs |
| 114 | 1.3.3.10 | Proj Plan update | manual | 10d | 2011-12-01 A | 2011-12-14 A | 100% |  |  | Christine Talbot | 80h | 80h | Christine Talbot |
| 115 | 1.3.4 | Review for consistency | milestone, manual | 8d | 2011-12-05 A | 2011-12-14 A | 100% |  |  | All | 64h | 64h | Christine Talbot |
| 116 | 1.3.5 | **Third "Sprint"** |  | 8d | 2011-12-05 A | 2011-12-14 A | 100% |  |  |  | 472h | 472h |  |
| 117 | 1.3.5.1 | Make GameStateScript static | manual | 2d | 2011-12-05 A | 2011-12-06 A | 100% |  |  | Todd Dobbs | 16h | 16h | Christine Talbot & Todd Dobbs |
| 118 | 1.3.5.2 | Incorporate text on instructions page | manual | 8d | 2011-12-05 A | 2011-12-14 A | 100% |  |  | Eric Faust | 64h | 64h | Christine Talbot & Eric Faust |
| 119 | 1.3.5.3 | grow function in gamestate | manual | 2d | 2011-12-05 A | 2011-12-06 A | 100% |  |  | Todd Dobbs | 16h | 16h | Todd Dobbs |
| 120 | 1.3.5.4 | destroy function in gamestate | manual | 2d | 2011-12-05 A | 2011-12-06 A | 100% |  |  | Todd Dobbs | 16h | 16h | Todd Dobbs |
| 121 | 1.3.5.5 | multiple planted function in gamestate | manual | 2d | 2011-12-05 A | 2011-12-06 A | 100% |  |  | Todd Dobbs | 16h | 16h | Todd Dobbs |
| 122 | 1.3.5.6 | show choice function to show in UI | manual | 3d | 2011-12-05 A | 2011-12-07 A | 100% |  |  | Joseph Blair | 24h | 24h | Christine Talbot |
| 123 | 1.3.5.7 | make choice function to show in UI | manual | 3d | 2011-12-05 A | 2011-12-07 A | 100% |  |  | Joseph Blair | 24h | 24h | Joseph Blair |
| 124 | 1.3.5.8 | play card function to update UI & gamestate | manual | 3d | 2011-12-05 A | 2011-12-07 A | 100% |  |  | Joseph Blair | 24h | 24h | Christine Talbot & Joseph Blair |
| 125 | 1.3.5.9 | check for gameover | manual | 3d | 2011-12-05 A | 2011-12-07 A | 100% |  |  | Joseph Blair | 24h | 24h | Christine Talbot |
| 126 | 1.3.5.10 | static timer for grow function | manual | 3d | 2011-12-05 A | 2011-12-07 A | 100% |  |  | Eric Faust | 24h | 24h | Eric Faust |
| 127 | 1.3.5.11 | variable timer for choices to be given | manual | 3d | 2011-12-05 A | 2011-12-07 A | 100% |  |  | Eric Faust | 24h | 24h | Eric Faust & Christine Talbot |
| 128 | 1.3.5.12 | mouseclick checks | manual | 3d | 2011-12-05 A | 2011-12-07 A | 100% |  |  | Joseph Blair | 24h | 24h | Christine Talbot |
| 129 | 1.3.5.13 | AI cleanups for new functions an tie-ins with above code | manual | 3d | 2011-12-05 A | 2011-12-07 A | 100% |  |  | Christine Talbot | 24h | 24h | Christine Talbot |
| 130 | 1.3.5.14 | Project Plan update | manual | 8d | 2011-12-05 A | 2011-12-14 A | 100% |  |  | Christine Talbot | 64h | 64h | Christine Talbot |
| 131 | 1.3.5.15 | Alerts for learning/messaging | manual | 3d | 2011-12-05 A | 2011-12-07 A | 100% |  |  | Christine Talbot | 24h | 24h | Christine Talbot |
| 132 | 1.3.5.16 | Controller updates | manual | 8d | 2011-12-05 A | 2011-12-14 A | 100% |  |  | Todd Dobbs | 64h | 64h | Todd Dobbs |
| 133 | 1.3.6 | **Playtesting** |  | 2h | 2011-12-08 A | 2011-12-08 A | 100% |  |  |  | 8h | 8h |  |
| 134 | 1.3.6.1 | 10 playtesting review sheets | manual | 8h | 2011-12-08 A | 2011-12-08 A | 100% |  |  | All | 8h | 8h | All |
| 135 | 1.3.7 | **Final "Sprint"** |  | 6d | 2011-12-08 A | 2011-12-15 | 93% | 0.44d | 0d |  | 1184h | 1110h |  |
| 136 | 1.3.7.1 | show/hear clicked | manual | 2d | 2011-12-08 A | 2011-12-09 A | 100% |  |  | Anyone As Available | 16h | 16h | Christine Talbot |
| 137 | 1.3.7.2 | show selected | manual | 3d | 2011-12-08 A | 2011-12-10 A | 100% |  |  | Anyone As Available | 24h | 24h | Christine Talbot |
| 138 | 1.3.7.3 | fix freezing AI | manual | 2d | 2011-12-08 A | 2011-12-09 A | 100% |  |  | Anyone As Available | 16h | 16h | Christine Talbot |
| 139 | 1.3.7.4 | speed up choices | manual | 4d | 2011-12-08 A | 2011-12-13 A | 100% |  |  | Todd Dobbs | 32h | 32h | Christine Talbot |
| 140 | 1.3.7.5 | slow down growing | manual | 3d | 2011-12-08 A | 2011-12-10 A | 100% |  |  | Anyone As Available | 24h | 24h | Todd Dobbs |
| 141 | 1.3.7.6 | update message center when click items | manual | 3d | 2011-12-08 A | 2011-12-10 A | 100% |  |  | Anyone As Available | 24h | 24h | Christine Talbot |
| 142 | 1.3.7.7 | fix buttons to look better | manual | 3d | 2011-12-08 A | 2011-12-11 A | 100% |  |  | Anyone As Available | 24h | 24h | Christine Talbot |
| 143 | 1.3.7.8 | add animations | manual | 3d | 2011-12-08 A | 2011-12-11 A | 100% |  |  | Anyone As Available | 24h | 24h | Christine Talbot |
| 144 | 1.3.7.9 | brighter colors | manual | 3d | 2011-12-08 A | 2011-12-12 A | 100% |  |  | Anyone As Available | 24h | 24h | Joseph Blair |
| 145 | 1.3.7.10 | show veggie ownership | manual | 3d | 2011-12-08 A | 2011-12-11 A | 100% |  |  | Anyone As Available | 24h | 24h | Christine Talbot |
| 146 | 1.3.7.11 | undo scores and message center from being buttons | manual | 3d | 2011-12-08 A | 2011-12-10 A | 100% |  |  | Anyone As Available | 24h | 24h | Christine Talbot |
| 147 | 1.3.7.12 | check scoring function | manual | 3d | 2011-12-08 A | 2011-12-10 A | 100% |  |  | Todd Dobbs | 24h | 24h | Todd Dobbs |
| 148 | 1.3.7.13 | enable restart functionality | manual | 3d | 2011-12-08 A | 2011-12-10 A | 100% |  |  | Todd Dobbs | 24h | 24h | Todd Dobbs |
| 149 | 1.3.7.14 | project plan updates | manual | 5d | 2011-12-08 A | 2011-12-14 A | 100% |  |  | Christine Talbot; Todd Dobbs | 80h | 80h | Christine Talbot |
| 150 | 1.3.7.15 | playtesting feedback consolidation | manual | 3d | 2011-12-08 A | 2011-12-12 A | 100% |  |  | Christine Talbot; Todd Dobbs | 48h | 48h | Eric Faust |
| 151 | 1.3.7.16 | delay grow() when animating | manual | 4d | 2011-12-08 A | 2011-12-13 A | 100% |  |  | Todd Dobbs | 32h | 32h | Todd Dobbs |
| 152 | 1.3.7.17 | bug with grow timer - get 0 often | manual | 4d | 2011-12-08 A | 2011-12-13 A | 100% |  |  | Todd Dobbs | 32h | 32h | Christine Talbot |
| 153 | 1.3.7.18 | add animations for destroy and grow function | manual | 4d | 2011-12-08 A | 2011-12-13 A | 100% |  |  | Anyone As Available | 32h | 32h | Discarded |
| 154 | 1.3.7.19 | incorporate difficulty setting within game | manual | 4d | 2011-12-08 A | 2011-12-13 A | 100% |  |  | Christine Talbot; Todd Dobbs | 64h | 64h | Christine Talbot |
| 155 | 1.3.7.20 | incorporate hints on/off in game | manual | 4d | 2011-12-08 A | 2011-12-13 A | 100% |  |  | Christine Talbot; Todd Dobbs | 64h | 64h | Christine Talbot |
| 156 | 1.3.7.21 | controller | manual | 5d | 2011-12-08 A | 2011-12-14 | 75% | 1.25d |  | Todd Dobbs | 40h | 30h | Todd Dobbs |
| 157 | 1.3.7.22 | fix colors for pumpkin, carrot, and cabbage | manual | 4d | 2011-12-08 A | 2011-12-13 A | 100% |  |  | Anyone As Available | 32h | 32h | Christine Talbot |
| 158 | 1.3.7.23 | fix volcano background | manual | 4d | 2011-12-08 A | 2011-12-13 A | 100% |  |  | Anyone As Available | 32h | 32h | Joseph Blair |
| 159 | 1.3.7.24 | base difficulty on player's play speed | manual | 4d | 2011-12-08 A | 2011-12-13 A | 100% |  |  | Christine Talbot | 32h | 32h | Discarded |
| 160 | 1.3.7.25 | add countdown page to emphasize speed for play | manual | 4d | 2011-12-08 A | 2011-12-13 A | 100% |  |  | Christine Talbot | 32h | 32h | Christine Talbot |
| 161 | 1.3.7.26 | comment & cleanup code | manual | 5d | 2011-12-08 A | 2011-12-14 A | 100% |  |  | Christine Talbot; Todd Dobbs | 80h | 80h | All |

| ID | WBS | Task | Type | Duration | Start | Finish | Complete | Remaining | Total slack | Resources | Work | Actual work | Resource for Actual Completion |
| --- | --- | --- | --- | --- | --- | --- | --- | --- | --- | --- | --- | --- | --- |
| 162 | 1.3.7.27 | **Documentation** |  | 6d | 2011-12-08 A | 2011-12-15 | 77% | 1.37d | 0d |  | 280h | 216h |  |
| 163 | 1.3.7.27.1 | Convert Playtest Sheet to Google Doc Form | manual | 1d | 2011-12-14 A | 2011-12-14 A | 100% |  |  | Todd Dobbs | 8h | 8h |  |
| 164 | 1.3.7.27.2 | Update original Hw9 docs | manual | 2d | 2011-12-08 | 2011-12-09 |  |  |  | Eric Faust | 16h |  |  |
| 165 | 1.3.7.27.3 | About the Development Process | manual | 2d | 2011-12-08 | 2011-12-09 |  |  |  | Eric Faust | 16h |  |  |
| 166 | 1.3.7.27.4 | Tech Doc of Requirements | manual | 2d | 2011-12-08 | 2011-12-09 |  |  |  | Christine Talbot | 16h |  |  |
| 167 | 1.3.7.27.5 | Video demo | manual | 2d | 2011-12-08 | 2011-12-09 |  |  |  | Eric Faust | 16h |  |  |
| 168 | 1.3.7.27.6 | Project Plan | manual | 5d | 2011-12-08 A | 2011-12-14 A | 100% |  |  | Christine Talbot | 40h | 40h | Christine Talbot |
| 169 | 1.3.7.27.7 | Cleanup source code | manual | 5d | 2011-12-08 A | 2011-12-14 A | 100% |  |  | All | 40h | 40h | All |
| 170 | 1.3.7.27.8 | Presentation | manual | 5d | 2011-12-08 A | 2011-12-14 A | 100% |  |  | Eric Faust | 40h | 40h | Eric Faust, Christine Talbot |
| 171 | 1.3.7.27.9 | Contribution Writeup | manual | 5d | 2011-12-08 A | 2011-12-14 A | 100% |  |  | All | 40h | 40h | All |
| 172 | 1.3.7.27.10 | Point Distribution | manual | 6d | 2011-12-08 A | 2011-12-15 A | 100% |  |  | All | 48h | 48h | All |
| 173 | 1.4 | Milestone - Due Date! | milestone, manual | 1d | 2011-12-15 | 2011-12-15 |  |  |  |  |  |  |  |
